# IWB 项目进度

Schedule from a web Gantt chart, 2025-03-05 to 2025-03-05.
Sundays are off

## Schedule

| ID | WBS | Task | Duration | Start | Finish | Complete |
| --- | --- | --- | --- | --- | --- | --- |
| 2 | 1 | **整机样品采购，拆机学习** | 1d | 2025-03-05 | 2025-03-05 | 100% |
| 3 | 1.1 | 55，65，75，86整机采购 | 1d | 2025-03-05 | 2025-03-05 | 100% |
| 4 | 2 | 55，86样品自组装（确认精确BOM） | 1d | 2025-03-05 | 2025-03-05 |  |
| 5 | 3 | 编制SOP | 1d | 2025-03-05 | 2025-03-05 |  |
| 6 | 4 | 55嘀嗒背光采购 | 1d | 2025-03-05 | 2025-03-05 |  |
| 7 | 5 | 86嘀嗒背光采购 | 1d | 2025-03-05 | 2025-03-05 |  |
